# 3期

Schedule from MS Project, 2015-01-06 to 2015-03-27.

## Calendars

- 标准: Mon-Fri 08:00-12:00, 13:00-17:00; Sat-Sun off.

## Resources

| Resource |
| --- |
| 刘献美 |
| 陶东升 |
| 董丰凯 |
| 唐运安 |
| 陈远豹 |
| 唐 |

## Schedule

| ID | WBS | Task | Duration | Start | Finish | Predecessors | Total slack | Free slack | Constraint | Resources | Work |
| --- | --- | --- | --- | --- | --- | --- | --- | --- | --- | --- | --- |
| 1 | 1 | 需求分析 | 2d | 2015-01-06 08:00 | 2015-01-07 17:00 |  | 49d | 0d | start no earlier than 2015-01-06 08:00 | 刘献美 | 16h |
| 2 | 2 | 编写测试计划 | 1d | 2015-01-08 08:00 | 2015-01-08 17:00 | 1 | 49d | 0d |  | 刘献美 | 8h |
| 3 | 3 | 编写测试方案 | 1d | 2015-01-09 08:00 | 2015-01-09 17:00 | 2 | 49d | 0d |  | 刘献美 | 8h |
| 4 | 4 | **编写测试案例** | 10d? | 2015-01-12 08:00 | 2015-01-23 17:00 | 3 | 40d | 2d |  | 刘献美 | 248h |
| 5 | 4.1 | **功能模块（11个）** | 8d | 2015-01-12 08:00 | 2015-01-21 17:00 |  | 42d |  |  | 刘献美 | 128h |
| 6 | 4.1.1 | 投资转换 | 1d | 2015-01-12 08:00 | 2015-01-12 17:00 |  | 49d |  |  | 刘献美 | 8h |
| 7 | 4.1.2 | 份额抵缴费 | 0.5d | 2015-01-13 08:00 | 2015-01-13 12:00 |  | 48.5d |  | start no earlier than 2015-01-13 08:00 | 刘献美 | 4h |
| 8 | 4.1.3 | 支付本金归属 | 0.5d | 2015-01-13 08:00 | 2015-01-13 12:00 |  | 48.5d |  | start no earlier than 2015-01-13 08:00 | 刘献美 | 4h |
| 9 | 4.1.4 | 转移本金归属 | 1d | 2015-01-14 08:00 | 2015-01-14 17:00 |  | 47d |  | start no earlier than 2015-01-14 08:00 | 刘献美 | 8h |
| 10 | 4.1.5 | 转保留账户本金归属 | 0.5d | 2015-01-15 08:00 | 2015-01-15 12:00 |  | 46.5d |  | start no earlier than 2015-01-15 08:00 | 刘献美 | 4h |
| 11 | 4.1.6 | 转保留计划本金归属 | 0.5d | 2015-01-15 08:00 | 2015-01-15 12:00 |  | 46.5d |  | start no earlier than 2015-01-15 08:00 | 刘献美 | 4h |
| 12 | 4.1.7 | 支付复职本金 | 1d | 2015-01-16 08:00 | 2015-01-16 17:00 |  | 45d |  | start no earlier than 2015-01-16 08:00 | 刘献美 | 8h |
| 13 | 4.1.8 | 转移复职本金 | 1d | 2015-01-19 08:00 | 2015-01-19 17:00 |  | 44d |  | start no earlier than 2015-01-17 08:00 | 刘献美 | 8h |
| 14 | 4.1.9 | 职工新增接口调整 | 0.5d | 2015-01-20 08:00 | 2015-01-20 12:00 |  | 43.5d |  | start no earlier than 2015-01-20 08:00 | 刘献美 | 4h |
| 15 | 4.1.10 | 职工变更接口调整 | 0.5d | 2015-01-20 08:00 | 2015-01-20 12:00 |  | 43.5d |  | start no earlier than 2015-01-20 08:00 | 刘献美 | 4h |
| 16 | 4.1.11 | 保留转正常(总部计划) | 1d | 2015-01-21 08:00 | 2015-01-21 17:00 |  | 42d |  | start no earlier than 2015-01-21 08:00 | 刘献美 | 8h |
| 17 | 4.2 | **报表模块(3个)** | 2d | 2015-01-22 08:00 | 2015-01-23 17:00 |  | 40d |  |  | 刘献美 | 32h |
| 18 | 4.2.1 | 计税表_纯本金 | 0.5d | 2015-01-22 08:00 | 2015-01-22 12:00 |  | 41.5d |  | start no earlier than 2015-01-22 08:00 | 刘献美 | 4h |
| 19 | 4.2.2 | 计税表_全余额 | 0.5d | 2015-01-22 08:00 | 2015-01-22 12:00 |  | 41.5d |  | start no earlier than 2015-01-22 08:00 | 刘献美 | 4h |
| 20 | 4.2.3 | 计税表_历史余额 | 1d | 2015-01-23 08:00 | 2015-01-23 17:00 |  | 40d |  | start no earlier than 2015-01-23 08:00 | 刘献美 | 8h |
| 21 | 4.3 | 任务管理平台bug | 1d? | 2015-01-12 08:00 | 2015-01-12 17:00 |  | 49d |  |  | 刘献美 | 8h |
| 22 | 5 | 搭建测试环境 | 1d? | 2015-01-26 08:00 | 2015-01-26 17:00 |  | 44d |  | start no earlier than 2015-01-26 08:00 | 刘献美 | 8h |
| 23 | 6 | **执行测试案例** | 41d? | 2015-01-28 08:00 | 2015-03-25 17:00 | 4 | 2d |  |  | 刘献美 | 628h |
| 24 | 6.1 | **功能模块（11个）** | 14d? | 2015-01-28 08:00 | 2015-02-16 17:00 |  | 29d |  |  | 刘献美 | 208h |
| 25 | 6.1.1 | 投资转换 | 2d | 2015-02-13 08:00 | 2015-02-16 17:00 |  | 29d |  | start no earlier than 2015-02-13 08:00 | 刘献美 | 16h |
| 26 | 6.1.2 | 份额抵缴费 | 2d | 2015-02-05 08:00 | 2015-02-06 17:00 |  | 35d |  | start no earlier than 2015-02-05 08:00 | 刘献美 | 16h |
| 27 | 6.1.3 | 支付本金归属 | 1d? | 2015-01-28 08:00 | 2015-01-28 17:00 |  | 42d |  | start no earlier than 2015-01-28 08:00 | 刘献美 | 8h |
| 28 | 6.1.4 | 转移本金归属 | 1d? | 2015-01-29 08:00 | 2015-01-29 17:00 |  | 41d |  | start no earlier than 2015-01-29 08:00 | 刘献美 | 8h |
| 29 | 6.1.5 | 转保留账户本金归属 | 1d? | 2015-01-30 08:00 | 2015-01-30 17:00 |  | 40d |  | start no earlier than 2015-01-30 08:00 | 刘献美 | 8h |
| 30 | 6.1.6 | 转保留计划本金归属 | 1d? | 2015-02-02 08:00 | 2015-02-02 17:00 |  | 39d |  | start no earlier than 2015-01-31 08:00 | 刘献美 | 8h |
| 31 | 6.1.7 | 支付复职本金 | 1d? | 2015-02-03 08:00 | 2015-02-03 17:00 |  | 38d |  | start no earlier than 2015-02-03 08:00 | 刘献美 | 8h |
| 32 | 6.1.8 | 转移复职本金 | 1d? | 2015-02-04 08:00 | 2015-02-04 17:00 |  | 37d |  | start no earlier than 2015-02-04 08:00 | 刘献美 | 8h |
| 33 | 6.1.9 | 职工新增接口调整 | 0.5d | 2015-02-09 08:00 | 2015-02-09 12:00 |  | 34.5d |  | start no earlier than 2015-02-09 08:00 | 刘献美 | 4h |
| 34 | 6.1.10 | 职工变更接口调整 | 0.5d | 2015-02-09 08:00 | 2015-02-09 12:00 |  | 34.5d |  | start no earlier than 2015-02-09 08:00 | 刘献美 | 4h |
| 35 | 6.1.11 | 保留转正常(总部计划) | 1d? | 2015-02-10 08:00 | 2015-02-10 17:00 |  | 33d |  | start no earlier than 2015-02-10 08:00 | 刘献美 | 8h |

| ID | WBS | Task | Duration | Start | Finish | Predecessors | Total slack | Constraint | Resources | Work |
| --- | --- | --- | --- | --- | --- | --- | --- | --- | --- | --- |
| 36 | 6.2 | **报表模块(3个)** | 1.5d? | 2015-02-11 08:00 | 2015-02-12 12:00 |  | 31.5d |  | 刘献美 | 28h |
| 37 | 6.2.1 | 计税表_纯本金 | 1d? | 2015-02-11 08:00 | 2015-02-11 17:00 |  | 32d | start no earlier than 2015-02-11 08:00 | 刘献美 | 8h |
| 38 | 6.2.2 | 计税表_全余额 | 0.5d | 2015-02-12 08:00 | 2015-02-12 12:00 |  | 31.5d | start no earlier than 2015-02-12 08:00 | 刘献美 | 4h |
| 39 | 6.2.3 | 计税表_历史余额 | 0.5d | 2015-02-12 08:00 | 2015-02-12 12:00 |  | 31.5d | start no earlier than 2015-02-12 08:00 | 刘献美 | 4h |
| 40 | 6.3 | 回归性测试 | 3d | 2015-02-16 08:00 | 2015-02-18 17:00 |  | 27d | start no earlier than 2015-02-16 08:00 | 刘献美 | 24h |
| 41 | 6.4 | 任务管理平台bug | 5d | 2015-03-19 08:00 | 2015-03-25 17:00 |  | 2d | start no earlier than 2015-03-19 08:00 | 刘献美 | 40h |
| 42 | 7 | 编写测试报告 | 1d? | 2015-03-26 08:00 | 2015-03-26 17:00 |  | 0d | start no earlier than 2015-03-26 08:00 | 刘献美 | 8h |
| 43 | 8 | 测试总结 | 1d? | 2015-03-27 08:00 | 2015-03-27 17:00 | 42 | 0d |  | 刘献美 | 8h |
